# Beca360

Schedule from MS Project XML, 2026-03-30 to 2027-04-14.

## Calendars

- Standard: Mon-Fri 08:00-12:00, 13:00-17:00; Sat-Sun off. Exceptions (off unless hours are given): 2026-03-29 to 2026-03-30 08:00-12:30, 13:00-17:30.

## Resources

| Resource | Rate |
| --- | --- |
| Unassigned |  |
| Analista Funcional | 30 |
| Project Manager | 60 |
| Sponsor | 1000 |
| Institución Piloto |  |
| Product Owner | 40 |
| Finanzas | 20 |
| Arquitecto de Software | 25 |
| DevOps | 20 |
| Responsable de Seguridad | 25 |
| Arquitecto de Base de Datos | 25 |
| Desarrollador Backend | 20 |
| Desarrollador Frontend | 20 |
| QA Consultant | 15 |
| Soporte | 12 |

## Schedule

| ID | WBS | Task | Type | Duration | Start | Finish | Predecessors | Baseline start | Baseline finish | Constraint | Resources |
| --- | --- | --- | --- | --- | --- | --- | --- | --- | --- | --- | --- |
| 1 | 1 | **Beca360** |  | 273d | 2026-03-30 | 2027-04-14 |  | 2026-03-30 | 2027-04-14 | start no later than 2026-03-30 |  |
| 2 | 1.1 | **1. Iniciación** |  | 28d | 2026-03-30 | 2026-05-06 |  | 2026-03-30 | 2026-05-06 | start no earlier than 2026-03-30 |  |
| 3 | 1.1.1 | Constitución del equipo |  | 7d | 2026-03-30 | 2026-04-07 |  | 2026-03-30 | 2026-04-07 |  | Sponsor [35.71%]; Project Manager [36%] |
| 4 | 1.1.2 | Elaboración del Acta de Proyecto |  | 7d | 2026-04-07 | 2026-04-16 | 3 | 2026-04-07 | 2026-04-16 |  | Project Manager [142.86%] |
| 5 | 1.1.3 | Identificación y análisis inicial de interesados |  | 7d | 2026-04-07 | 2026-04-16 | 3 | 2026-04-07 | 2026-04-16 |  | Analista Funcional [35.71%]; Project Manager [35.71%] |
| 6 | 1.1.4 | Definición inicial del presupuesto |  | 7d | 2026-04-16 | 2026-04-27 | 4 | 2026-04-16 | 2026-04-27 |  | Project Manager [35.71%]; Sponsor [35.71%] |
| 7 | 1.1.5 | Revisión y aprobación del Acta de Proyecto |  | 7d | 2026-04-27 | 2026-05-06 | 5, 6 | 2026-04-27 | 2026-05-06 |  | Project Manager [14.29%]; Sponsor [14.29%] |
| 8 | 1.1.6 | Hito: Acta de Proyecto aprobada | milestone | 0d | 2026-05-06 | 2026-05-06 | 7 | 2026-05-06 | 2026-05-06 |  | Sponsor |
| 9 | 1.2 | **2. Planificación** |  | 42d | 2026-05-06 | 2026-07-03 |  | 2026-05-06 | 2026-07-03 | finish no later than 2027-01-01 |  |
| 10 | 1.2.1 | Relevamiento de requisitos |  | 7d | 2026-05-06 | 2026-05-15 | 7 | 2026-05-06 | 2026-05-15 |  | Analista Funcional [107.14%]; Institución Piloto [107.14%] |
| 11 | 1.2.2 | Análisis y documentación de requisitos |  | 7d | 2026-05-15 | 2026-05-26 | 10 | 2026-05-15 | 2026-05-26 |  | Analista Funcional [107.14%]; Project Manager [107.14%] |
| 12 | 1.2.3 | Definición del alcance del MVP |  | 7d | 2026-05-26 | 2026-06-04 | 11 | 2026-05-26 | 2026-06-04 |  | Product Owner [35.71%]; Project Manager [35.71%] |
| 13 | 1.2.4 | Elaboración de EDT |  | 7d | 2026-05-26 | 2026-06-04 | 11 | 2026-05-26 | 2026-06-04 |  | Project Manager [71.43%] |
| 14 | 1.2.5 | Elaboración del plan de riesgos |  | 7d | 2026-05-26 | 2026-06-04 | 11 | 2026-05-26 | 2026-06-04 |  | Project Manager [71.43%] |
| 15 | 1.2.6 | Elaboración del plan de comunicaciones |  | 7d | 2026-05-26 | 2026-06-04 | 11 | 2026-05-26 | 2026-06-04 |  | Project Manager [71.43%] |
| 16 | 1.2.7 | Elaboración de matriz de costos |  | 7d | 2026-05-26 | 2026-06-04 | 11 | 2026-05-26 | 2026-06-04 |  | Finanzas [35.71%]; Project Manager [35.71%] |
| 17 | 1.2.8 | Elaboración del cronograma |  | 7d | 2026-06-04 | 2026-06-15 | 16, 15, 14, 13 | 2026-06-04 | 2026-06-15 |  | Project Manager [35.71%] |
| 18 | 1.2.9 | Definición de líneas base |  | 7d | 2026-06-15 | 2026-06-24 | 17 | 2026-06-15 | 2026-06-24 |  | Project Manager [35.71%]; Sponsor [35.71%] |
| 19 | 1.2.10 | Aprobación del Plan del Proyecto |  | 7d | 2026-06-24 | 2026-07-03 | 18 | 2026-06-24 | 2026-07-03 |  | Project Manager [8.93%]; Sponsor [8.93%] |
| 20 | 1.2.11 | Hito: Alcance del MVP congelado | milestone | 0d | 2026-07-03 | 2026-07-03 | 19 | 2026-07-03 | 2026-07-03 |  | Product Owner; Sponsor |
| 21 | 1.3 | **3. Diseño** |  | 35d | 2026-05-26 | 2026-07-14 |  | 2026-05-26 | 2026-07-14 | as late as possible |  |
| 22 | 1.3.1 | Diseño de arquitectura |  | 14d | 2026-05-26 | 2026-06-15 | 11 | 2026-05-26 | 2026-06-15 |  | Arquitecto de Software |
| 23 | 1.3.2 | Diseño de infraestructura cloud |  | 7d | 2026-06-15 | 2026-06-24 | 22 | 2026-06-15 | 2026-06-24 |  | Arquitecto de Software [71.43%]; DevOps [71.43%] |
| 24 | 1.3.3 | Diseño de seguridad |  | 7d | 2026-06-15 | 2026-06-24 | 22 | 2026-06-15 | 2026-06-24 |  | Responsable de Seguridad [142.86%] |
| 25 | 1.3.4 | Diseño de modelo de datos |  | 7d | 2026-06-15 | 2026-06-24 | 22 | 2026-06-15 | 2026-06-24 |  | Arquitecto de Base de Datos [71.43%]; Arquitecto de Software [71.43%] |
| 26 | 1.3.5 | Diseño UX/UI |  | 14d | 2026-05-26 | 2026-06-15 | 11 | 2026-05-26 | 2026-06-15 |  | Product Owner [37.38%]; Desarrollador Frontend [69.77%] |
| 27 | 1.3.6 | Elaboración de prototipo de alta fidelidad |  | 7d | 2026-06-15 | 2026-06-24 | 26 | 2026-06-15 | 2026-06-24 |  | Product Owner [59.52%]; Desarrollador Frontend [83.33%] |
| 28 | 1.3.7 | Validación del prototipo |  | 7d | 2026-06-24 | 2026-07-03 | 27 | 2026-06-24 | 2026-07-03 |  | Institución Piloto [35.71%]; Product Owner [35.71%] |
| 29 | 1.3.8 | Aprobación de arquitectura y diseño |  | 7d | 2026-07-03 | 2026-07-14 | 28, 25, 24, 23 | 2026-07-03 | 2026-07-14 |  | Arquitecto de Software [14.29%]; Product Owner [14.29%]; Responsable de Seguridad [14.29%] |
| 30 | 1.3.9 | Hito: Diseño aprobado | milestone | 0d | 2026-07-14 | 2026-07-14 | 29 | 2026-07-14 | 2026-07-14 |  | Project Manager; Sponsor |

| ID | WBS | Task | Type | Duration | Start | Finish | Predecessors | Baseline start | Baseline finish | Constraint | Resources |
| --- | --- | --- | --- | --- | --- | --- | --- | --- | --- | --- | --- |
| 31 | 1.4 | **4. Desarrollo iterativo** |  | 147d | 2026-07-14 | 2027-02-04 |  | 2026-07-14 | 2027-02-04 | as late as possible |  |
| 32 | 1.4.1 | Preparación del entorno de desarrollo |  | 4d | 2026-07-14 | 2026-07-20 | 29 | 2026-07-14 | 2026-07-20 |  | DevOps [41.67%]; Desarrollador Backend [41.67%]; Desarrollador Frontend [41.67%] |
| 33 | 1.4.2 | Desarrollo Gestión de Convocatorias |  | 28d | 2026-07-14 | 2026-08-21 | 29 | 2026-07-14 | 2026-08-21 |  | Arquitecto de Base de Datos [35.71%]; Desarrollador Backend [35.71%]; Desarrollador Frontend [35.71%] |
| 34 | 1.4.3 | Integración y validación Gestión de Convocatorias |  | 7d | 2026-07-20 | 2026-07-29 | 32 | 2026-07-20 | 2026-07-29 |  | Analista Funcional [47.62%]; Product Owner [47.62%]; QA Consultant [47.62%] |
| 35 | 1.4.4 | Desarrollo Gestión de Postulaciones |  | 28d | 2026-08-21 | 2026-09-30 | 33 | 2026-08-21 | 2026-09-30 |  | Arquitecto de Base de Datos [35.71%]; Desarrollador Backend [35.71%]; Desarrollador Frontend [35.71%] |
| 36 | 1.4.5 | Integración y validación Gestión de Postulaciones |  | 7d | 2026-07-29 | 2026-08-07 | 34 | 2026-07-29 | 2026-08-07 |  | Analista Funcional [47.62%]; Product Owner [47.62%]; QA Consultant [47.62%] |
| 37 | 1.4.6 | Desarrollo Validación Documental |  | 28d | 2026-09-30 | 2026-11-09 | 35 | 2026-09-30 | 2026-11-09 |  | Arquitecto de Base de Datos [35.71%]; Desarrollador Backend [35.71%]; Desarrollador Frontend [35.71%] |
| 38 | 1.4.7 | Integración y validación Validación Documental |  | 7d | 2026-08-07 | 2026-08-18 | 36 | 2026-08-07 | 2026-08-18 |  | Analista Funcional [35.71%]; Product Owner [35.71%]; Responsable de Seguridad [35.71%]; QA Consultant [35.71%] |
| 39 | 1.4.8 | Desarrollo Evaluación y Asignación |  | 35d | 2026-11-09 | 2026-12-28 | 37 | 2026-11-09 | 2026-12-28 |  | Analista Funcional [19.05%]; Responsable de Seguridad [19.05%]; Arquitecto de Base de Datos [19.05%]; Desarrollador Backend [19.05%]; Desarrollador Frontend [19.05%]; Soporte [19.05%] |
| 40 | 1.4.9 | Integración y validación Evaluación y Asignación |  | 7d | 2026-08-18 | 2026-08-27 | 38 | 2026-08-18 | 2026-08-27 |  | Analista Funcional [47.62%]; Product Owner [47.62%]; QA Consultant [47.62%] |
| 41 | 1.4.10 | Desarrollo Reportes e Indicadores |  | 28d | 2026-12-28 | 2027-02-04 | 39 | 2026-12-28 | 2027-02-04 |  | Arquitecto de Base de Datos [35.71%]; Desarrollador Backend [35.71%]; Desarrollador Frontend [35.71%] |
| 42 | 1.4.11 | Integración de módulos y pruebas internas |  | 7d | 2026-08-27 | 2026-09-07 | 40 | 2026-08-27 | 2026-09-07 |  | Analista Funcional [57.14%]; Product Owner [57.14%]; Arquitecto de Software [57.14%]; QA Consultant [57.14%]; Soporte [57.14%] |
| 43 | 1.4.12 | Hito: MVP integrado en testing | milestone | 0d | 2027-02-04 | 2027-02-04 | 41 | 2027-02-04 | 2027-02-04 |  | Project Manager; Product Owner |
| 44 | 1.5 | **5. Testing, QA y UAT** |  | 35d | 2027-02-04 | 2027-03-25 |  | 2027-02-04 | 2027-03-25 | as late as possible |  |
| 45 | 1.5.1 | Preparación del entorno de QA |  | 7d | 2027-02-04 | 2027-02-15 | 41 | 2027-02-04 | 2027-02-15 |  | DevOps [35.71%]; QA Consultant [35.71%] |
| 46 | 1.5.2 | Pruebas funcionales |  | 14d | 2027-02-15 | 2027-03-05 | 45 | 2027-02-15 | 2027-03-05 |  | Analista Funcional [7.55%]; Product Owner [28.33%]; DevOps [28.33%]; QA Consultant [28.33%]; Soporte [90.66%] |
| 47 | 1.5.3 | Pruebas de regresión |  | 7d | 2027-02-15 | 2027-02-24 | 45 | 2027-02-15 | 2027-02-24 |  | QA Consultant [46.08%]; Analista Funcional [32.26%]; Product Owner [32.26%]; Soporte [32.26%] |
| 48 | 1.5.4 | Pruebas de carga y performance |  | 7d | 2027-02-15 | 2027-02-24 | 45 | 2027-02-15 | 2027-02-24 |  | DevOps [29.76%]; QA Consultant [29.76%]; Arquitecto de Software [41.67%]; Desarrollador Backend [41.67%] |
| 49 | 1.5.5 | Pruebas de seguridad / pentesting |  | 7d | 2027-02-15 | 2027-02-24 | 45 | 2027-02-15 | 2027-02-24 |  | Responsable de Seguridad [29.76%]; QA Consultant [29.76%]; Institución Piloto [41.67%]; Soporte [41.67%] |
| 50 | 1.5.6 | Corrección de defectos |  | 14d | 2027-03-05 | 2027-03-25 | 47, 46 | 2027-03-05 | 2027-03-25 | as late as possible | Arquitecto de Software [23.81%]; Responsable de Seguridad [23.81%]; Arquitecto de Base de Datos [23.81%]; Desarrollador Backend [23.81%]; Desarrollador Frontend [23.81%]; QA Consultant [23.81%] |
| 51 | 1.5.7 | UAT con institución piloto |  | 7d | 2027-02-24 | 2027-03-05 | 48 | 2027-02-24 | 2027-03-05 |  | Institución Piloto [71.43%]; Product Owner [71.43%]; QA Consultant [71.43%] |
| 52 | 1.5.8 | Resolución de observaciones UAT |  | 7d | 2027-03-05 | 2027-03-16 | 51 | 2027-03-05 | 2027-03-16 |  | QA Consultant [21.65%]; Project Manager [30.3%]; Product Owner [30.3%]; Desarrollador Backend [30.3%]; Desarrollador Frontend [30.3%] |
| 53 | 1.5.9 | Hito: QA y UAT aprobados | milestone | 0d | 2027-03-16 | 2027-03-16 | 52, 51 | 2027-03-16 | 2027-03-16 |  | Sponsor; Product Owner |
| 54 | 1.6 | **6. Implementación y Cierre** |  | 21d | 2027-03-16 | 2027-04-14 |  | 2027-03-16 | 2027-04-14 | as late as possible |  |
| 55 | 1.6.1 | Preparación del ambiente productivo |  | 7d | 2027-03-25 | 2027-04-05 | 50 | 2027-03-25 | 2027-04-05 |  | DevOps [37.59%]; Analista Funcional [52.63%]; Product Owner [52.63%] |
| 56 | 1.6.2 | Despliegue productivo controlado |  | 7d | 2027-03-16 | 2027-03-25 | 52 | 2027-03-16 | 2027-03-25 |  | Arquitecto de Software [71.43%]; DevOps [71.43%] |
| 57 | 1.6.3 | Capacitación institucional |  | 7d | 2027-03-16 | 2027-03-25 | 52 | 2027-03-16 | 2027-03-25 |  | Soporte [71.43%]; Product Owner [71.43%] |
| 58 | 1.6.4 | Monitoreo y estabilización inicial |  | 7d | 2027-04-05 | 2027-04-14 | 55 | 2027-04-05 | 2027-04-14 |  | DevOps [57.6%]; Soporte [57.6%]; Arquitecto de Software [80.65%]; Desarrollador Backend [80.65%]; Desarrollador Frontend [80.65%] |
| 59 | 1.6.5 | Documentación final |  | 7d | 2027-04-05 | 2027-04-14 | 55 | 2027-04-05 | 2027-04-14 |  | Project Manager [8.82%]; Desarrollador Backend [12.42%]; Desarrollador Frontend [12.42%]; Product Owner [12.42%]; Arquitecto de Software [32.26%]; Responsable de Seguridad [32.26%]; Arquitecto de Base de Datos [32.26%] |
| 60 | 1.6.6 | Lecciones aprendidas |  | 7d | 2027-04-05 | 2027-04-14 | 56, 55 | 2027-04-05 | 2027-04-14 |  | Project Manager [0.23%]; Product Owner [2.52%]; Arquitecto de Software [2.52%]; Responsable de Seguridad [2.52%]; Arquitecto de Base de Datos [2.52%]; Desarrollador Backend [2.52%]; Desarrollador Frontend [2.52%]; QA Consultant [2.52%] |
| 61 | 1.6.7 | Acta de cierre |  | 7d | 2027-03-25 | 2027-04-05 | 57 | 2027-03-25 | 2027-04-05 |  | Project Manager [8.93%]; Sponsor [8.93%] |
| 62 | 1.6.8 | Hito: Proyecto cerrado | milestone | 0d | 2027-04-14 | 2027-04-14 | 58 | 2027-04-14 | 2027-04-14 |  | Sponsor |
